# Information System Schedule, MW-PPPC-546386-GO-RFB

Schedule from MS Project XML, 2027-01-04 to 2027-08-13.

## Calendars

- Standard: Mon-Fri 08:00-12:00, 13:00-17:00; Sat-Sun off.

## Schedule

| ID | WBS | Task | Type | Duration | Start | Finish | Predecessors |
| --- | --- | --- | --- | --- | --- | --- | --- |
| 1 | 1 | Effective Date | milestone | 0w | 2027-01-04 | 2027-01-04 |  |
| 2 | 2 | **1 Project mobilization and planning** |  | 2w | 2027-01-04 | 2027-01-15 |  |
| 3 | 2.1 | Mobilize the Information System team |  | 1w | 2027-01-04 | 2027-01-08 | 1 |
| 4 | 2.2 | Confirm Purchaser inputs and baseline the schedule |  | 2w | 2027-01-04 | 2027-01-15 | 1 |
| 5 | 2.3 | Discovery: NRIS documentation, current process and site walkthroughs |  | 2w | 2027-01-04 | 2027-01-15 | 1 |
| 6 | 2.4 | Order long-lead equipment and ICT infrastructure |  | 1w | 2027-01-11 | 2027-01-15 | 3 |
| 7 | 2.5 | Recommended trainee numbers and prerequisites issued to NRB | milestone | 0w | 2027-01-15 | 2027-01-15 | 4 |
| 8 | 3 | **2 Design and detailed planning** |  | 4w | 2027-01-18 | 2027-02-12 |  |
| 9 | 3.1 | Discovery: NRIS test data profiling and Discovery Report |  | 2w | 2027-01-18 | 2027-01-29 | 5, 96, 97 |
| 10 | 3.2 | ICT Site Preparation Guide |  | 2w | 2027-01-18 | 2027-01-29 | 5 |
| 11 | 3.3 | ICT Site Preparation Guide issued to the facility works | milestone | 0w | 2027-01-29 | 2027-01-29 | 10 |
| 12 | 3.4 | Network requirements for the Government Wide Area Network |  | 1w | 2027-01-25 | 2027-01-29 | 10SS+1w |
| 13 | 3.5 | High-Level Design |  | 2w | 2027-01-18 | 2027-01-29 | 5 |
| 14 | 3.6 | Low-Level Design |  | 2w | 2027-01-25 | 2027-02-05 | 13SS+1w |
| 15 | 3.7 | Interface Control Documents, agreed with NRB developers |  | 3w | 2027-01-18 | 2027-02-05 | 5 |
| 16 | 3.8 | Security Design Documentation and certificate profile with e-Government |  | 3w | 2027-01-18 | 2027-02-05 | 5 |
| 17 | 3.9 | Card layout and card identifier, joint redesign with NRB |  | 3w | 2027-01-18 | 2027-02-05 | 5 |
| 18 | 3.10 | Future-state processes and draft Standard Operating Procedures |  | 3w | 2027-01-18 | 2027-02-05 | 5 |
| 19 | 3.11 | Design submitted for approval | milestone | 0w | 2027-02-05 | 2027-02-05 | 9, 12, 14, 15, 16, 17, 18 |
| 20 | 3.12 | Design review with NRB |  | 1w | 2027-02-08 | 2027-02-12 | 19 |
| 21 | 3.13 | Detailed Design Approval | milestone | 0w | 2027-02-12 | 2027-02-12 | 20 |
| 22 | 4 | **3 Procurement and manufacturing** |  | 21w | 2027-01-18 | 2027-06-11 |  |
| 23 | 4.1 | Equipment manufacture, started on order: two personalization and two mailing systems |  | 10w | 2027-01-18 | 2027-03-26 | 6 |
| 24 | 4.2 | Options fixed at design approval fitted to the equipment |  | 2w | 2027-03-15 | 2027-03-26 | 21FS+4w, 23SS+8w |
| 25 | 4.3 | Equipment ready for factory acceptance | milestone | 0w | 2027-03-26 | 2027-03-26 | 23, 24 |
| 26 | 4.4 | Blank cards, first production run: qualification and factory acceptance stock |  | 7w | 2027-02-15 | 2027-04-02 | 21, 98 |
| 27 | 4.5 | Qualification cards delivered to the equipment factory | milestone | 0w | 2027-04-09 | 2027-04-09 | 26FS+1w |
| 28 | 4.6 | Factory acceptance test procedure issued to NRB for approval | milestone | 0w | 2027-04-09 | 2027-04-09 | 21FS+8w |
| 29 | 4.7 | Blank cards, first delivery of not less than 500,000 |  | 5w | 2027-04-05 | 2027-05-07 | 26 |
| 30 | 4.8 | Blank cards, remaining 1,500,000 in shipments of not less than 500,000 |  | 5w | 2027-05-10 | 2027-06-11 | 29 |
| 31 | 4.9 | ICT infrastructure manufacture and delivery, ordered at mobilization |  | 11w | 2027-01-18 | 2027-04-02 | 6 |
| 32 | 4.10 | Application build: components defined by the Technical Requirements, from design start |  | 12w | 2027-01-18 | 2027-04-09 | 5 |
| 33 | 4.11 | Application build: NRIS-facing and signing components, after design approval |  | 10w | 2027-02-15 | 2027-04-23 | 21, 99, 100 |
| 34 | 4.12 | NRIS interface simulators from the Interface Control Documents |  | 2w | 2027-02-15 | 2027-02-26 | 21 |
| 35 | 4.13 | Production side of the NRIS interface, tested against simulators |  | 8w | 2027-03-01 | 2027-04-23 | 34 |
| 36 | 4.14 | Clearing agent appointed | milestone | 0w | 2027-03-26 | 2027-03-26 | 21FS+6w |
| 37 | 4.15 | Customs documentation prepared |  | 4w | 2027-03-29 | 2027-04-23 | 36 |

Notes:
- 21: Contractual milestone in the Implementation Schedule

| ID | WBS | Task | Type | Duration | Start | Finish | Predecessors |
| --- | --- | --- | --- | --- | --- | --- | --- |
| 38 | 5 | **4 Facility renovation (facility works)** |  | 12w | 2027-02-15 | 2027-05-07 |  |
| 39 | 5.1 | Facility renovation, under the facility works, server room first |  | 12w | 2027-02-15 | 2027-05-07 | 11, 21 |
| 40 | 5.2 | Server room handed over: sealed, powered through its UPS, cooled and cabled | milestone | 0w | 2027-04-09 | 2027-04-09 | 39SS+8w, 103 |
| 41 | 5.3 | Readiness inspection of the production floor |  | 1w | 2027-05-03 | 2027-05-07 | 39SS+11w |
| 42 | 5.4 | Production floor ready for installation | milestone | 0w | 2027-05-07 | 2027-05-07 | 39, 41 |
| 43 | 6 | **5 Factory acceptance testing** |  | 1w | 2027-04-26 | 2027-04-30 |  |
| 44 | 6.1 | Factory acceptance of the equipment on production card stock, NRB delegation present |  | 1w | 2027-04-26 | 2027-04-30 | 25, 26, 27, 28, 102, 1FS+16w |
| 45 | 6.2 | Printer Control Service proven against the equipment software |  | 1w | 2027-04-26 | 2027-04-30 | 25, 32, 1FS+16w |
| 46 | 6.3 | NRB technical staff trained at the factory |  | 1w | 2027-04-26 | 2027-04-30 | 25, 1FS+16w |
| 47 | 6.4 | Successful FAT | milestone | 0w | 2027-04-30 | 2027-04-30 | 44, 45, 46 |
| 48 | 7 | **6 Shipping and customs clearance** |  | 8w | 2027-05-03 | 2027-06-25 |  |
| 49 | 7.1 | Shipping of the personalization and mailing equipment |  | 2w | 2027-05-03 | 2027-05-14 | 47 |
| 50 | 7.2 | Customs clearance and delivery to NRB |  | 1w | 2027-05-17 | 2027-05-21 | 49, 37, 107 |
| 51 | 7.3 | Equipment delivered on site | milestone | 0w | 2027-05-21 | 2027-05-21 | 50 |
| 52 | 7.4 | First card delivery shipped, cleared and delivered to NRB |  | 2w | 2027-05-10 | 2027-05-21 | 29, 107 |
| 53 | 7.5 | First card delivery on site | milestone | 0w | 2027-05-21 | 2027-05-21 | 52 |
| 54 | 7.6 | Remaining card shipments cleared and delivered to NRB |  | 2w | 2027-06-14 | 2027-06-25 | 30, 107 |
| 55 | 7.7 | All 2,000,000 cards on site, before commissioning | milestone | 0w | 2027-06-25 | 2027-06-25 | 54 |
| 56 | 8 | **7 Installation and site acceptance testing** |  | 12w | 2027-04-12 | 2027-07-02 |  |
| 57 | 8.1 | ICT infrastructure delivered to site, inspected and racked |  | 1w | 2027-04-12 | 2027-04-16 | 31, 40 |
| 58 | 8.2 | NRB technical staff shadow installation and commissioning |  | 12w | 2027-04-12 | 2027-07-02 | 57SS, 104 |
| 59 | 8.3 | Platform build: application and database clusters, storage array, directory, database, security, non-production environments |  | 1w | 2027-04-19 | 2027-04-23 | 57 |
| 60 | 8.4 | Hardware security modules installed, key ceremony, certificate signing request to e-Government |  | 1w | 2027-04-19 | 2027-04-23 | 57 |
| 61 | 8.5 | Secondary environment deployed at Blantyre and replication established |  | 3w | 2027-04-19 | 2027-05-07 | 57, 105, 106 |
| 62 | 8.6 | Application deployed and integrated with the directory |  | 1w | 2027-04-26 | 2027-04-30 | 59, 32, 33 |
| 63 | 8.7 | Pre-Commissioning Test Program submitted to NRB for approval | milestone | 0w | 2027-04-30 | 2027-04-30 | 57FS+2w |
| 64 | 8.8 | Early integration with NRIS: interfaces tested as NRB delivers them |  | 5w | 2027-05-03 | 2027-06-04 | 62, 35, 108 |
| 65 | 8.9 | Integration with NRIS completed against NRB's delivered side |  | 2w | 2027-06-07 | 2027-06-18 | 111, 62, 35, 108 |
| 66 | 8.10 | Pre-commissioning tests of the ICT estate, Table A 4, 5, 8 and 13 |  | 2w | 2027-05-10 | 2027-05-21 | 62, 61, 63 |
| 67 | 8.11 | Performance testing of the software, and security testing |  | 2w | 2027-05-17 | 2027-05-28 | 62, 66SS+1w |
| 68 | 8.12 | Equipment inspected on delivery, unpacked and placed |  | 1w | 2027-05-24 | 2027-05-28 | 51, 42 |
| 69 | 8.13 | Equipment installed and commissioned by the manufacturer's engineers |  | 3w | 2027-05-24 | 2027-06-11 | 51, 42 |
| 70 | 8.14 | Critical Spare Parts List submitted to NRB for approval | milestone | 0w | 2027-06-18 | 2027-06-18 | 51FS+4w |
| 71 | 8.15 | User acceptance testing with NRIS stakeholders |  | 2w | 2027-06-14 | 2027-06-25 | 62, 65SS+1w |
| 72 | 8.16 | Security Operations Center integrated with NRB's Security Operations Center |  | 1w | 2027-06-21 | 2027-06-25 | 62, 114 |
| 73 | 8.17 | Independent penetration testing of the full deployed configuration |  | 1w | 2027-06-14 | 2027-06-18 | 69, 62 |
| 74 | 8.18 | Pre-commissioning tests of the equipment and integration, Table A 1, 6, 7, 9 to 12, 14 and 16 |  | 3w | 2027-06-14 | 2027-07-02 | 69, 63, 65FF+2w |
| 75 | 8.19 | Pilot production of 500 to 1,000 test cards, not issued to citizens |  | 1w | 2027-06-28 | 2027-07-02 | 69, 71, 65, 113, 53 |
| 76 | 8.20 | Installation and SAT complete | milestone | 0w | 2027-07-02 | 2027-07-02 | 66, 74, 67, 73, 75, 61 |

Notes:
- 47: Contractual milestone in the Implementation Schedule
- 51: Contractual milestone in the Implementation Schedule
- 76: Contractual milestone in the Implementation Schedule

| ID | WBS | Task | Type | Duration | Start | Finish | Predecessors |
| --- | --- | --- | --- | --- | --- | --- | --- |
| 77 | 9 | **8 Training and knowledge transfer** |  | 4w | 2027-06-21 | 2027-07-16 |  |
| 78 | 9.1 | User training, groups one and two, one for each shift |  | 2w | 2027-06-21 | 2027-07-02 | 69FS+1w, 109, 1FS+24w |
| 79 | 9.2 | Technical training, NRB technical trainers co-delivering |  | 2w | 2027-06-28 | 2027-07-09 | 78SS+1w |
| 80 | 9.3 | Management training |  | 1w | 2027-06-28 | 2027-07-02 | 78SS+1w |
| 81 | 9.4 | User training, cover group, delivered by NRB trainers under observation |  | 2w | 2027-07-05 | 2027-07-16 | 78 |
| 82 | 9.5 | Training completed | milestone | 0w | 2027-07-16 | 2027-07-16 | 78, 79, 80, 81 |
| 83 | 10 | **9 System commissioning and performance testing** |  | 4w | 2027-07-05 | 2027-07-30 |  |
| 84 | 10.1 | Operational acceptance tests 1 to 12, 14 and 15 |  | 1w | 2027-07-05 | 2027-07-09 | 76, 55 |
| 85 | 10.2 | Sustained production stability and multi-shift operation, tests 2 and 13 |  | 2w | 2027-07-05 | 2027-07-16 | 76 |
| 86 | 10.3 | Operational independence, test 16 |  | 1w | 2027-07-12 | 2027-07-16 | 78, 79 |
| 87 | 10.4 | Final acceptance demonstration, test 17, ten working day observation |  | 2w | 2027-07-19 | 2027-07-30 | 84, 85, 86, 101 |
| 88 | 10.5 | System commissioned | milestone | 0w | 2027-07-30 | 2027-07-30 | 87 |
| 89 | 10.6 | Warranty and support documentation delivered | milestone | 0w | 2027-07-30 | 2027-07-30 | 87 |
| 90 | 11 | **10 Handover, go-live and closure** |  | 2w | 2027-08-02 | 2027-08-13 |  |
| 91 | 11.1 | As-built documentation, prepared progressively from week 27, finalized |  | 2w | 2027-08-02 | 2027-08-13 | 88 |
| 92 | 11.2 | Transfer of Security Operations Center operation to NRB |  | 2w | 2027-08-02 | 2027-08-13 | 88, 72 |
| 93 | 11.3 | Stabilization: resident engineers on every shift, daily review with NRB |  | 2w | 2027-08-02 | 2027-08-13 | 88, 115 |
| 94 | 11.4 | Full handover and go-live | milestone | 0w | 2027-08-13 | 2027-08-13 | 91, 92, 93 |
| 95 | 12 | **Dependencies on the Purchaser and other parties** |  | 24w | 2027-01-11 | 2027-06-25 |  |
| 96 | 12.1 | NRIS documentation received (NRB) | milestone | 0w | 2027-01-08 | 2027-01-08 | 1FS+1w |
| 97 | 12.2 | Access to the NRIS test environment for profiling (NRB) | milestone | 0w | 2027-01-15 | 2027-01-15 | 1FS+2w |
| 98 | 12.3 | Card design decisions (NRB) | milestone | 0w | 2027-02-05 | 2027-02-05 | 1FS+5w |
| 99 | 12.4 | QR code specification (NRB) | milestone | 0w | 2027-02-05 | 2027-02-05 | 1FS+5w |
| 100 | 12.5 | Certificate profile and signing request procedure (e-Government) | milestone | 0w | 2027-02-05 | 2027-02-05 | 1FS+5w |
| 101 | 12.6 | Observation period for the final acceptance demonstration agreed (NRB) | milestone | 0w | 2027-02-05 | 2027-02-05 | 1FS+5w |
| 102 | 12.7 | Factory acceptance delegation nominated (NRB) | milestone | 0w | 2027-03-19 | 2027-03-19 | 1FS+11w |
| 103 | 12.8 | Dedicated electrical connection to the facility live (NRB) | milestone | 0w | 2027-03-26 | 2027-03-26 | 1FS+12w |
| 104 | 12.9 | Technical trainees nominated (NRB) | milestone | 0w | 2027-04-09 | 2027-04-09 | 1FS+14w |
| 105 | 12.10 | Government Wide Area Network provisioned (NRB, e-Government) | milestone | 0w | 2027-04-16 | 2027-04-16 | 1FS+15w |
| 106 | 12.11 | Access, floor space, power and cooling at the Blantyre data center (NRB) | milestone | 0w | 2027-04-16 | 2027-04-16 | 1FS+15w |
| 107 | 12.12 | Purchaser documents for customs clearance (NRB) | milestone | 0w | 2027-04-23 | 2027-04-23 | 1FS+16w |
| 108 | 12.13 | Connectivity from the facility to the NRIS test environment (NRB) | milestone | 0w | 2027-04-30 | 2027-04-30 | 1FS+17w |
| 109 | 12.14 | User trainees nominated (NRB) | milestone | 0w | 2027-05-14 | 2027-05-14 | 1FS+19w |
| 110 | 12.15 | NRIS side of the interface (NRB developers) |  | 16w | 2027-02-15 | 2027-06-04 | 21, 15 |
| 111 | 12.16 | NRIS side of the interface ready for integration (NRB) | milestone | 0w | 2027-06-04 | 2027-06-04 | 110 |
| 112 | 12.17 | Document Signer certificate issue (e-Government) |  | 3w | 2027-04-26 | 2027-05-14 | 60 |
| 113 | 12.18 | Document Signer certificate issued (e-Government) | milestone | 0w | 2027-05-14 | 2027-05-14 | 112 |
| 114 | 12.19 | NRB Security Operations Center integration details (NRB) | milestone | 0w | 2027-06-18 | 2027-06-18 | 1FS+24w |
| 115 | 12.20 | Remote support access arranged (NRB, e-Government) | milestone | 0w | 2027-06-25 | 2027-06-25 | 1FS+25w |

Notes:
- 82: Contractual milestone in the Implementation Schedule
- 88: Contractual milestone in the Implementation Schedule
- 94: Contractual milestone in the Implementation Schedule
